# UTN BA - Proyecto Final 2014 - G422 - Gantt del proyecto

How a schedule from MS Project changed from version to version. A marks actual dates.

## Version 1 (saved 2014-06-02)

| ID | WBS | Task | Duration | Start | Finish | Predecessors | Complete | Total float | Constraint |
| --- | --- | --- | --- | --- | --- | --- | --- | --- | --- |
| 1 | 1 | **Sistema de información, alerta y prevención de accidentes en los centros de esquí (White Powder)** | 223d | 2014-04-12 A | 2014-11-20 |  | 39% | 0d |  |
| 2 | 1.1 | **Documentación de Gestión del Proyecto** | 55d | 2014-04-12 A | 2014-06-05 |  | 99% | 167.38d |  |
| 3 | 1.1.1 | **Acta de Proyecto** | 50d | 2014-04-12 A | 2014-05-31 A |  | 100% |  |  |
| 4 |  | Elaboración del documento | 82h | 2014-04-12 A | 2014-05-22 A |  | 100% |  | finish no earlier than 2014-05-22 |
| 5 |  | Revisión del documento | 14h | 2014-05-23 A | 2014-05-29 A | 4 | 100% |  | finish no earlier than 2014-05-29 |
| 6 |  | Validación y correcciones | 4h | 2014-05-30 A | 2014-05-31 A | 5 | 100% |  | finish no earlier than 2014-05-31 |
| 7 | 1.1.2 | **Documento de WBS** | 28d | 2014-04-25 A | 2014-05-22 A |  | 100% |  |  |
| 8 |  | Elaboración del documento | 29h | 2014-04-25 A | 2014-05-08 A |  | 100% |  | start no earlier than 2014-04-25 |
| 9 |  | Revisión del documento | 14h | 2014-05-09 A | 2014-05-15 A | 8 | 100% |  | finish no earlier than 2014-05-15 |
| 10 |  | Validación y correcciones | 14h | 2014-05-16 A | 2014-05-22 A | 9 | 100% |  | finish no earlier than 2014-05-22 |
| 11 | 1.1.3 | **Matriz de Roles y Responsabilidades** | 28d | 2014-04-25 A | 2014-05-22 A |  | 100% |  |  |
| 12 |  | Elaboración del documento | 28h | 2014-04-25 A | 2014-05-08 A |  | 100% |  | finish no earlier than 2014-05-08 |
| 13 |  | Revisión del documento | 14h | 2014-05-09 A | 2014-05-15 A | 12 | 100% |  | finish no earlier than 2014-05-15 |
| 14 |  | Validación y correcciones | 14h | 2014-05-16 A | 2014-05-22 A | 13 | 100% |  | finish no earlier than 2014-05-22 |
| 15 | 1.1.4 | **Matriz de habilidades y competencias** | 34.88d | 2014-04-25 A | 2014-05-29 A |  | 100% |  |  |
| 16 |  | Elaboración del documento | 28h | 2014-04-25 A | 2014-05-08 A |  | 100% |  | finish no earlier than 2014-05-08 |
| 17 |  | Revisión del documento | 14h | 2014-05-09 A | 2014-05-15 A | 16 | 100% |  | finish no earlier than 2014-05-15 |
| 18 |  | Validación y correcciones | 14h | 2014-05-23 A | 2014-05-29 A | 17 | 100% |  | finish no earlier than 2014-05-29 |
| 19 | 1.1.5 | **Análisis de Riesgos** | 27.25d | 2014-04-25 A | 2014-05-22 A |  | 100% |  |  |
| 20 |  | Elaboración del documento | 106h | 2014-04-25 A | 2014-05-08 A |  | 100% |  | finish no earlier than 2014-05-15 |
| 21 |  | Revisión del documento | 50h | 2014-05-09 A | 2014-05-15 A | 20 | 100% |  | finish no earlier than 2014-05-22 |
| 22 |  | Validación y correcciones | 50h | 2014-05-16 A | 2014-05-22 A | 21 | 100% |  | finish no earlier than 2014-05-29 |
| 23 | 1.1.6 | **Matriz de Comunicaciones** | 27.88d | 2014-04-25 A | 2014-05-22 A |  | 100% |  | finish no later than 2014-05-22 |
| 24 |  | Elaboración del documento | 28h | 2014-04-25 A | 2014-05-08 A |  | 100% |  | finish no earlier than 2014-05-08 |
| 25 |  | Revisión del documento | 14h | 2014-05-09 A | 2014-05-15 A | 24 | 100% |  | start no earlier than 2014-05-09 |
| 26 |  | Validación y correcciones | 14h | 2014-05-16 A | 2014-05-22 A | 25 | 100% |  | finish no earlier than 2014-05-22 |
| 27 | 1.1.7 | **GANTT del proyecto** | 21d | 2014-05-16 A | 2014-06-05 |  | 83% | 167.38d |  |
| 28 |  | Elaboración del documento | 14h | 2014-05-16 A | 2014-05-22 A | 8 | 100% |  | finish no earlier than 2014-05-22 |
| 29 |  | Revisión del documento | 14h | 2014-05-23 A | 2014-05-29 A | 28 | 100% |  | start no earlier than 2014-05-23 |
| 30 |  | Validación y correcciones | 14h | 2014-05-30 A | 2014-06-05 | 29, 7 | 50% | 167.38d | finish no earlier than 2014-06-05 |
| 31 | 1.1.8 | **Análisis de factibilidad técnica y operativa** | 18d | 2014-05-15 A | 2014-06-02 A |  | 100% |  |  |
| 32 |  | Elaboración del documento | 15h | 2014-05-15 A | 2014-05-22 A | 21 | 100% |  | finish no earlier than 2014-05-22 |
| 33 |  | Revisión del documento | 14h | 2014-05-23 A | 2014-05-29 A | 32 | 100% |  | finish no earlier than 2014-05-29 |
| 34 |  | Validación y correcciones | 7h | 2014-05-30 A | 2014-06-02 A | 33 | 100% |  | finish no earlier than 2014-06-01 |
| 35 | 1.2 | **Documentación de Análisis** | 27.88d | 2014-05-30 A | 2014-06-26 |  | 8% | 135.38d |  |
| 36 | 1.2.1 | **Documento de requerimientos de negocio** | 20.88d | 2014-05-30 A | 2014-06-19 |  | 17% | 142.38d |  |
| 37 |  | Elaboración del documento | 14h | 2014-05-30 A | 2014-06-05 |  | 50% | 135.38d | finish no earlier than 2014-06-05 |
| 38 |  | Revisión del documento | 14h | 2014-06-06 | 2014-06-12 | 37 |  | 142.38d | finish no earlier than 2014-06-12 |
| 39 |  | Validación y correcciones | 14h | 2014-06-13 | 2014-06-19 | 38 |  | 142.38d | finish no earlier than 2014-06-19 |
| 40 | 1.2.2 | **Matriz de trazabilidad entre requerimientos y casos de uso** | 20.88d | 2014-06-06 | 2014-06-26 | 37, 46 |  | 135.38d |  |
| 41 |  | Elaboración del documento | 14h | 2014-06-06 | 2014-06-12 |  |  | 135.38d | finish no earlier than 2014-06-12 |
| 42 |  | Revisión del documento | 14h | 2014-06-13 | 2014-06-19 | 41 |  | 135.38d | finish no earlier than 2014-06-19 |
| 43 |  | Validación y correcciones | 14h | 2014-06-20 | 2014-06-26 | 42 |  | 135.38d | finish no earlier than 2014-06-26 |
| 44 | 1.2.3 | **Documentos de casos de uso** | 19d | 2014-06-01 A | 2014-06-19 |  | 11% | 142.38d |  |
| 45 | 1.2.3.1 | **Diagramas de casos de uso** | 19d | 2014-06-01 A | 2014-06-19 |  | 9% | 142.38d |  |
| 46 |  | Elaboración del documento | 10h | 2014-06-01 A | 2014-06-05 |  | 35% | 135.38d | finish no earlier than 2014-06-05 |
| 47 |  | Revisión del documento | 14h | 2014-06-06 | 2014-06-12 | 46 |  | 142.38d | finish no earlier than 2014-06-12 |
| 48 |  | Validación y correcciones | 14h | 2014-06-13 | 2014-06-19 | 47 |  | 142.38d | finish no earlier than 2014-06-19 |
| 49 | 1.2.3.2 | **Especificación de casos de uso** | 19d | 2014-06-01 A | 2014-06-19 |  | 13% | 142.38d |  |
| 50 |  | Elaboración del documento | 10h | 2014-06-01 A | 2014-06-05 |  | 50% | 135.38d | finish no earlier than 2014-06-05 |
| 51 |  | Revisión del documento | 14h | 2014-06-06 | 2014-06-12 | 50 |  | 142.38d | finish no earlier than 2014-06-12 |
| 52 |  | Validación y correcciones | 14h | 2014-06-13 | 2014-06-19 | 51 |  | 142.38d | finish no earlier than 2014-06-19 |
| 53 | 1.2.4 | **Diagramas de actividades** | 20.88d | 2014-06-06 | 2014-06-26 |  |  | 135.38d |  |
| 54 |  | Elaboración del documento | 14h | 2014-06-06 | 2014-06-12 | 50 |  | 135.38d | finish no earlier than 2014-06-12 |
| 55 |  | Revisión del documento | 14h | 2014-06-13 | 2014-06-19 | 54 |  | 135.38d | finish no earlier than 2014-06-19 |
| 56 |  | Validación y correcciones | 14h | 2014-06-20 | 2014-06-26 | 55 |  | 135.38d | finish no earlier than 2014-06-26 |
| 57 | 1.3 | **Documentación de Diseño** | 20.88d | 2014-06-13 | 2014-07-03 |  |  | 6d |  |
| 58 | 1.3.1 | **Diagrama Entidad Relación** | 13.88d | 2014-06-13 | 2014-06-26 |  |  | 37d |  |
| 59 |  | Elaboración del documento | 14h | 2014-06-13 | 2014-06-19 |  |  | 140d | start no earlier than 2014-06-13 |
| 60 |  | Revisión del documento | 8h | 2014-06-20 | 2014-06-23 | 59 |  | 146.38d | finish no earlier than 2014-06-23 |
| 61 |  | Validación y corrección | 6h | 2014-06-24 | 2014-06-26 | 60 |  | 146.38d | finish no earlier than 2014-06-26 |
| 62 | 1.3.2 | **Diagrama de secuencia** | 17.25d | 2014-06-16 | 2014-07-03 |  |  | 0d | finish no later than 2014-07-03 |
| 63 |  | Elaboración del documento | 8h | 2014-06-16 | 2014-06-19 |  |  | 2.38d | finish no earlier than 2014-06-19 |
| 64 |  | Revisión del documento | 8h | 2014-06-23 | 2014-06-26 | 63 |  | 0d | finish no earlier than 2014-06-26 |
| 65 |  | Validación y corrección | 14h | 2014-06-27 | 2014-07-03 | 64 |  | 0d | start no earlier than 2014-06-27 |
| 66 | 1.3.3 | **Estructura de pantallas - Mockup (UI)** | 13.88d | 2014-06-20 | 2014-07-03 |  |  | 36.38d |  |
| 67 |  | Elaboración del documento | 14h | 2014-06-20 | 2014-06-26 |  |  | 139.38d | finish no earlier than 2014-06-26 |
| 68 |  | Revisión del documento | 8h | 2014-06-27 | 2014-06-30 | 67 |  | 140d | start no earlier than 2014-06-27 |
| 69 |  | Validación y corrección | 6h | 2014-07-01 | 2014-07-03 | 68 |  | 139.38d | finish no earlier than 2014-07-03 |
| 70 | 1.3.4 | **Diagrama de interacción (UX)** | 13.88d | 2014-06-20 | 2014-07-03 |  |  | 0d | finish no later than 2014-07-03 |

| ID | WBS | Task | Duration | Start | Finish | Predecessors | Total float | Constraint |
| --- | --- | --- | --- | --- | --- | --- | --- | --- |
| 71 |  | Elaboración del documento | 14h | 2014-06-20 | 2014-06-26 |  | 0d | finish no earlier than 2014-06-26 |
| 72 |  | Revisión del documento | 8h | 2014-06-27 | 2014-06-30 | 71 | 0d | finish no earlier than 2014-06-30 |
| 73 |  | Validación y corrección | 6h | 2014-07-01 | 2014-07-03 | 72 | 0d | finish no earlier than 2014-07-03 |
| 74 | 1.3.5 | **Diagrama de despliegue** | 13.88d | 2014-06-13 | 2014-06-26 |  | 6.38d | finish no later than 2014-07-03 |
| 75 |  | Elaboración del documento | 14h | 2014-06-13 | 2014-06-19 |  | 6.38d | finish no earlier than 2014-06-19 |
| 76 |  | Revisión del documento | 8h | 2014-06-20 | 2014-06-23 | 75 | 6.38d | finish no earlier than 2014-06-23 |
| 77 |  | Validación y corrección | 6h | 2014-06-24 | 2014-06-26 | 76 | 6.38d | finish no earlier than 2014-06-26 |
| 78 | 1.3.6 | **Diagrama de clases** | 13.88d | 2014-06-20 | 2014-07-03 |  | 36.38d |  |
| 79 |  | Elaboración del documento | 14h | 2014-06-20 | 2014-06-26 | 59 | 140d | start no earlier than 2014-06-20 |
| 80 |  | Revisión del documento | 8h | 2014-06-27 | 2014-06-30 | 79 | 36.38d | finish no earlier than 2014-06-30 |
| 81 |  | Validación y corrección | 6h | 2014-07-01 | 2014-07-03 | 80 | 139.38d | finish no earlier than 2014-07-03 |
| 82 | 1.4 | **Construcción del sistema** | 111.88d | 2014-07-04 | 2014-10-23 | 57 | 5.38d |  |
| 83 | 1.4.1 | **Construcción del primer prototipo** | 48.88d | 2014-07-04 | 2014-08-21 |  | 13.38d |  |
| 84 | 1.4.1.1 | **Módulo Registro de usuarios** | 7.25d | 2014-07-04 | 2014-07-11 |  | 37d |  |
| 85 |  | Registro de usuarios | 10h | 2014-07-04 | 2014-07-08 |  | 36.38d | finish no earlier than 2014-07-08 |
| 86 |  | Reseteo/cambio de contraseña | 6h | 2014-07-09 | 2014-07-11 | 85 | 37d |  |
| 87 | 1.4.1.2 | **Modulo Login** | 6.88d | 2014-07-12 | 2014-07-18 |  | 36.38d |  |
| 88 |  | Autenticación de usuarios | 8h | 2014-07-12 | 2014-07-15 | 84 | 36.38d | finish no earlier than 2014-07-15 |
| 89 |  | Validación de usuarios | 6h | 2014-07-16 | 2014-07-18 | 88 | 36.38d | finish no earlier than 2014-07-18 |
| 90 | 1.4.1.3 | **Modulo Información básica** | 10.25d | 2014-07-08 | 2014-07-18 |  | 33d |  |
| 91 |  | Ubicación y detalles de las facilidades del centro de esquí | 8h | 2014-07-08 | 2014-07-11 |  | 98d | start no earlier than 2014-07-04 |
| 92 |  | Normas de seguridad | 8h | 2014-07-12 | 2014-07-15 |  | 35.38d | finish no earlier than 2014-07-15 |
| 93 |  | Señalización en las pistas | 8h | 2014-07-08 | 2014-07-11 |  | 98d | finish no earlier than 2014-07-10 |
| 94 |  | Información del clima | 10h | 2014-07-14 | 2014-07-18 |  | 33d | start no earlier than 2014-07-14 |
| 95 | 1.4.1.4 | **Módulo Mi perfil** | 3.25d | 2014-07-19 | 2014-07-22 |  | 33d |  |
| 96 |  | Ubicación actual | 8h | 2014-07-19 | 2014-07-22 | 90 | 33d | finish no earlier than 2014-07-07 |
| 97 | 1.4.1.5 | **Modulo Administración** | 30.25d | 2014-07-04 | 2014-08-03 |  | 14d |  |
| 98 |  | Edición de información básica del centro de esquí | 6h | 2014-07-23 | 2014-07-25 |  | 22.38d | finish no earlier than 2014-07-25 |
| 99 |  | ABM de pistas | 16h | 2014-07-27 | 2014-08-03 |  | 14d | start no earlier than 2014-07-27 |
| 100 |  | ABM de administradores | 6h | 2014-07-04 | 2014-07-06 |  | 41.38d | finish no earlier than 2014-07-06 |
| 101 |  | ABM de rescatistas | 10h | 2014-07-07 | 2014-07-11 |  | 37d | start no earlier than 2014-07-07 |
| 102 | 1.4.1.6 | **Módulo Reconocimiento de pista** | 6.88d | 2014-08-04 | 2014-08-10 |  | 13.38d |  |
| 103 |  | Grabación de pista | 6h | 2014-08-04 | 2014-08-06 | 97 | 13.38d | finish no earlier than 2014-08-06 |
| 104 |  | Confirmación de pista | 8h | 2014-08-07 | 2014-08-10 | 103 | 13.38d | finish no earlier than 2014-08-10 |
| 105 |  | Ejecución de casos de pruebas | 87h | 2014-08-11 | 2014-08-21 | 84, 87, 90, 95, 97, 102 | 13.38d | finish no earlier than 2014-08-21 |
| 106 | 1.4.1.8 | **Informe de ejecución de pruebas** | 10.25d | 2014-08-11 | 2014-08-21 | 84, 87, 90, 95, 97, 102 | 14d |  |
| 107 |  | Elaboración del documento | 6h | 2014-08-11 | 2014-08-13 |  | 13.38d | finish no earlier than 2014-08-13 |
| 108 |  | Revisión de incidentes de testing | 8h | 2014-08-14 | 2014-08-17 | 107 | 14d | start no earlier than 2014-08-14 |
| 109 |  | Corrección de incidentes de testing | 8h | 2014-08-18 | 2014-08-21 | 108 | 14d | start no earlier than 2014-08-18 |
| 110 | 1.4.2 | **Construcción del segundo prototipo** | 20.88d | 2014-08-22 | 2014-09-11 | 83 | 11.38d |  |
| 111 | 1.4.2.1 | **Módulo Administración** | 5.25d | 2014-08-22 | 2014-08-27 |  | 15d |  |
| 112 |  | ABM de zonas de alertas | 12h | 2014-08-22 | 2014-08-27 |  | 15d | start no earlier than 2014-08-22 |
| 113 | 1.4.2.2 | **Monitoreo de esquiadores en el centro de esquí** | 6.88d | 2014-08-24 | 2014-08-30 |  | 11.38d |  |
| 114 |  | Cantidad de esquiadores | 4h | 2014-08-29 | 2014-08-30 |  | 11.38d | finish no earlier than 2014-08-30 |
| 115 |  | Ubicación de esquiadores | 14h | 2014-08-24 | 2014-08-30 |  | 11.38d | finish no earlier than 2014-08-30 |
| 116 |  | Ubicación de rescatistas | 14h | 2014-08-24 | 2014-08-30 |  | 12d | start no earlier than 2014-08-24 |
| 117 |  | Ejecución de casos de pruebas | 8h | 2014-08-31 | 2014-09-03 | 111, 113 | 19.38d | finish no earlier than 2014-09-03 |
| 118 | 1.4.2.4 | **Informe de ejecución de pruebas** | 11.88d | 2014-08-31 | 2014-09-11 | 111, 113 | 11.38d |  |
| 119 |  | Elaboración del documento | 8h | 2014-08-31 | 2014-09-03 |  | 12d | start no earlier than 2014-08-31 |
| 120 |  | Revisión de incidentes de testing | 8h | 2014-09-05 | 2014-09-08 | 119 | 63d | start no earlier than 2014-09-04 |
| 121 |  | Corrección de incidentes de testing | 6h | 2014-09-09 | 2014-09-11 | 120 | 11.38d | finish no earlier than 2014-09-11 |
| 122 | 1.4.3 | **Construcción del tercer prototipo** | 20.25d | 2014-09-12 | 2014-10-02 | 110 | 9.75d |  |
| 123 | 1.4.3.1 | **Módulo Mi Perfil** | 5.25d | 2014-09-16 | 2014-09-21 |  | 20d |  |
| 124 | 1.4.3.1.1 | **Estadísticas** | 1.25d | 2014-09-16 | 2014-09-17 |  | 20d |  |
| 125 |  | Velocidad máxima alcanzada | 2h | 2014-09-16 | 2014-09-16 |  | 20.38d | finish no earlier than 2014-09-16 |
| 126 |  | Velocidad promedio | 2h | 2014-09-16 | 2014-09-16 |  | 20.38d | finish no earlier than 2014-09-16 |
| 127 |  | Altura máxima alcanzada | 2h | 2014-09-17 | 2014-09-17 |  | 20d | start no earlier than 2014-09-17 |
| 128 |  | Distancia recorrida | 2h | 2014-09-17 | 2014-09-17 |  | 20d | start no earlier than 2014-09-17 |
| 129 |  | Puesta a cero de estadísticas | 8h | 2014-09-18 | 2014-09-21 | 124 | 20d | start no earlier than 2014-09-16 |
| 130 | 1.4.3.2 | **Módulo Alertas** | 7.88d | 2014-09-12 | 2014-09-19 |  | 8.38d |  |
| 131 |  | ABM de alertas | 6h | 2014-09-12 | 2014-09-14 |  | 13.38d | finish no earlier than 2014-09-14 |
| 132 | 1.4.3.2.2 | **Envío de alertas monocanal** | 2.88d | 2014-09-12 | 2014-09-14 |  | 13.38d |  |
| 133 |  | A esquiadores | 6h | 2014-09-12 | 2014-09-14 |  | 14d | finish no earlier than 2014-09-11 |
| 134 |  | A rescatistas | 6h | 2014-09-12 | 2014-09-14 |  | 13.38d | finish no earlier than 2014-09-14 |
| 135 |  | Recepción de alertas | 10h | 2014-09-14 | 2014-09-18 |  | 10d | finish no earlier than 2014-09-14 |
| 136 | 1.4.3.2.4 | **Envío de alertas multicanal** | 4.88d | 2014-09-15 | 2014-09-19 |  | 8.38d |  |
| 137 |  | A un grupo determinado | 10h | 2014-09-15 | 2014-09-19 |  | 8.38d | finish no earlier than 2014-09-19 |
| 138 |  | A todos | 10h | 2014-09-15 | 2014-09-19 |  | 8.38d | finish no earlier than 2014-09-19 |
| 139 |  | Ejecución de casos de pruebas | 8h | 2014-09-20 | 2014-09-23 | 130 | 17.38d | finish no earlier than 2014-09-23 |
| 140 | 1.4.3.4 | **Informe de ejecución de pruebas** | 12.25d | 2014-09-20 | 2014-10-02 | 130 | 9d |  |

| ID | WBS | Task | Duration | Start | Finish | Predecessors | Total float | Constraint |
| --- | --- | --- | --- | --- | --- | --- | --- | --- |
| 141 |  | Elaboración del documento | 8h | 2014-09-20 | 2014-09-23 |  | 8.38d | finish no earlier than 2014-09-23 |
| 142 |  | Revisión de incidentes de testing | 10h | 2014-09-24 | 2014-09-28 | 141 | 8.38d | finish no earlier than 2014-09-28 |
| 143 |  | Corrección de incidentes de testing | 8h | 2014-09-29 | 2014-10-02 | 142 | 9.12d | start no earlier than 2014-09-29 |
| 144 | 1.4.4 | **Construcción del cuarto prototipo** | 20.88d | 2014-10-03 | 2014-10-23 | 122 | 5.38d |  |
| 145 | 1.4.4.1 | **Módulo Alertas** | 3.88d | 2014-10-03 | 2014-10-06 |  | 8.38d |  |
| 146 |  | Incorporación de audio en las alertas | 8h | 2014-10-03 | 2014-10-06 |  | 8.38d | finish no earlier than 2014-10-06 |
| 147 | 1.4.4.2 | **Módulo Mi Perfil** | 6.25d | 2014-10-03 | 2014-10-09 |  | 6d |  |
| 148 |  | Conectar con periférico | 8h | 2014-10-03 | 2014-10-06 |  | 8.38d | finish no earlier than 2014-10-06 |
| 149 |  | Botón de emergencia | 4h | 2014-10-08 | 2014-10-09 |  | 6d | finish no earlier than 2014-10-03 |
| 150 | 1.4.4.3 | **Compartir en redes sociales** | 1.88d | 2014-10-08 | 2014-10-09 |  | 5.38d |  |
| 151 |  | Estadísticas | 2h | 2014-10-08 | 2014-10-08 |  | 6.38d | finish no earlier than 2014-10-08 |
| 152 |  | Ubicación actual | 2h | 2014-10-09 | 2014-10-09 |  | 5.38d | finish no earlier than 2014-10-09 |
| 153 |  | Ejecución de casos de pruebas | 12h | 2014-10-10 | 2014-10-15 | 145, 147, 150 | 13.38d | finish no earlier than 2014-10-15 |
| 154 | 1.4.4.5 | **Informe de ejecución de pruebas** | 13.88d | 2014-10-10 | 2014-10-23 |  | 5.38d |  |
| 155 |  | Elaboración del documento | 12h | 2014-10-10 | 2014-10-15 | 145, 147, 150 | 5.38d | finish no earlier than 2014-10-15 |
| 156 |  | Revisión de incidentes de testing | 8h | 2014-10-16 | 2014-10-19 | 155 | 6d | start no earlier than 2014-10-16 |
| 157 |  | Corrección de incidentes de testing | 8h | 2014-10-20 | 2014-10-23 | 156 | 5.38d | finish no earlier than 2014-10-23 |
| 158 | 1.5 | **Documentación de testing** | 10.88d | 2014-06-27 | 2014-07-07 |  | 135.38d |  |
| 159 | 1.5.1 | **Documento de Casos de Prueba** | 10.88d | 2014-06-27 | 2014-07-07 |  | 135.38d |  |
| 160 |  | Elaboración del documento | 8h | 2014-06-27 | 2014-06-30 | 35 | 135.38d | finish no earlier than 2014-06-30 |
| 161 |  | Revisión del documento | 6h | 2014-07-01 | 2014-07-03 | 160 | 135.38d | finish no earlier than 2014-07-03 |
| 162 |  | Validación y correcciones | 8h | 2014-07-04 | 2014-07-07 | 161 | 135.38d | finish no earlier than 2014-07-07 |
| 163 | 1.6 | **Entrega del producto final** | 10.88d | 2014-10-30 | 2014-11-09 | 82 | 0d |  |
| 164 | 1.6.1 | **Manual de usuario** | 10.88d | 2014-10-30 | 2014-11-09 |  | 0d |  |
| 165 |  | Elaboración del documento | 8h | 2014-10-30 | 2014-11-02 |  | 0d | finish no earlier than 2014-11-02 |
| 166 |  | Revisión del documento | 6h | 2014-11-03 | 2014-11-05 | 165 | 0d | finish no earlier than 2014-11-05 |
| 167 |  | Validación y correcciones | 8h | 2014-11-06 | 2014-11-09 | 166 | 0d | finish no earlier than 2014-11-09 |
| 168 | 1.6.2 | **Manual de instalación.** | 10.25d | 2014-10-30 | 2014-11-09 |  | 0d |  |
| 169 |  | Elaboración del documento | 8h | 2014-10-30 | 2014-11-02 |  | 0d | finish no earlier than 2014-11-02 |
| 170 |  | Revisión del documento | 6h | 2014-11-03 | 2014-11-05 | 169 | 0d | start no earlier than 2014-11-03 |
| 171 |  | Validación y correcciones | 8h | 2014-11-06 | 2014-11-09 | 170 | 0d | start no earlier than 2014-11-06 |
| 172 | 1.7 | **Entregables de Marketing** | 41.88d | 2014-07-25 | 2014-09-04 |  | 76.38d |  |
| 173 | 1.7.1 | **Poster del Proyecto** | 13.88d | 2014-07-25 | 2014-08-07 |  | 104.38d |  |
| 174 |  | Elaboración del entregable | 14h | 2014-07-25 | 2014-07-31 |  | 105d | start no earlier than 2014-07-25 |
| 175 |  | Revisión del entregable | 6h | 2014-08-01 | 2014-08-03 | 174 | 104.38d | finish no earlier than 2014-08-03 |
| 176 |  | Validación y ajustes | 8h | 2014-08-04 | 2014-08-07 | 175 | 104.38d | finish no earlier than 2014-08-07 |
| 177 | 1.7.2 | **Presentación Comercial del Proyecto** | 7.88d | 2014-08-28 | 2014-09-04 |  | 76.38d |  |
| 178 |  | Gestión del Catering | 1h | 2014-08-28 | 2014-08-28 |  | 83.38d | finish no earlier than 2014-08-28 |
| 179 |  | Elaboración de la presentación | 8h | 2014-08-28 | 2014-08-31 |  | 77d | start no earlier than 2014-08-28 |
| 180 |  | Revisión de la presentación | 6h | 2014-09-01 | 2014-09-03 | 179 | 77d | start no earlier than 2014-09-01 |
| 181 |  | Delivery de la presentación | 2h | 2014-09-04 | 2014-09-04 | 180 | 76.38d | finish no earlier than 2014-09-04 |
| 182 | 1.8 | **Cierre del proyecto** | 10.88d | 2014-11-10 | 2014-11-20 |  | 0d |  |
| 183 | 1.8.1 | **Documento de cierre del proyecto** | 10.88d | 2014-11-10 | 2014-11-20 |  | 0d |  |
| 184 |  | Elaboración del documento | 6h | 2014-11-10 | 2014-11-12 | 163 | 0d | start no earlier than 2014-11-10 |
| 185 |  | Revisión del documento | 8h | 2014-11-13 | 2014-11-16 | 184 | 0d | start no earlier than 2014-11-13 |
| 186 |  | Validación y correcciones | 8h | 2014-11-17 | 2014-11-20 | 185 | 0d | finish no earlier than 2014-11-20 |
| 187 | 1.8.2 | **Documento de lecciones aprendidas** | 10.88d | 2014-11-10 | 2014-11-20 |  | 0d |  |
| 188 |  | Elaboración del documento | 6h | 2014-11-10 | 2014-11-12 | 163 | 0d | finish no earlier than 2014-11-12 |
| 189 |  | Revisión del documento | 8h | 2014-11-13 | 2014-11-16 | 188 | 0d | finish no earlier than 2014-11-16 |
| 190 |  | Validación y correcciones | 8h | 2014-11-17 | 2014-11-20 | 189 | 0d | finish no earlier than 2014-11-20 |

## Version 2 (saved 2014-06-06)

Note of the change: Actualización del GANTT para 12/06/2014

Last finish stays 2014-11-20. Complete tasks 23 → 27.

Changed:

| ID | Task | Start | Finish | Complete | Total float | Other |
| --- | --- | --- | --- | --- | --- | --- |
| 1 | **Sistema de información, alerta y prevención de accidentes en los centros de esquí (White Powder)** |  |  | 39% → 42% |  |  |
| 2 | **Documentación de Gestión del Proyecto** |  | 2014-06-05 A | 99% → 100% | 167.38d → none |  |
| 27 | **GANTT del proyecto** |  | 2014-06-05 A | 83% → 100% | 167.38d → none |  |
| 30 | Validación y correcciones |  | 2014-06-05 A | 50% → 100% | 167.38d → none |  |
| 35 | **Documentación de Análisis** |  |  | 8% → 34% |  |  |
| 36 | **Documento de requerimientos de negocio** |  |  | 17% → 50% |  |  |
| 37 | Elaboración del documento |  | 2014-06-05 A | 50% → 100% | 135.38d → none |  |
| 38 | Revisión del documento | 2014-06-06 A |  | 0% → 50% |  |  |
| 40 | **Matriz de trazabilidad entre requerimientos y casos de uso** | 2014-06-06 A |  | 0% → 17% |  |  |
| 41 | Elaboración del documento | 2014-06-06 A |  | 0% → 50% |  |  |
| 44 | **Documentos de casos de uso** |  |  | 11% → 45% |  |  |
| 45 | **Diagramas de casos de uso** |  |  | 9% → 45% |  |  |
| 46 | Elaboración del documento |  | 2014-06-05 A | 35% → 100% | 135.38d → none |  |
| 47 | Revisión del documento | 2014-06-06 A |  | 0% → 50% |  |  |
| 49 | **Especificación de casos de uso** |  |  | 13% → 45% |  |  |
| 50 | Elaboración del documento |  | 2014-06-05 A | 50% → 100% | 135.38d → none |  |
| 51 | Revisión del documento | 2014-06-06 A |  | 0% → 50% |  |  |
| 53 | **Diagramas de actividades** | 2014-06-06 A |  | 0% → 17% |  |  |
| 54 | Elaboración del documento | 2014-06-06 A |  | 0% → 50% |  |  |
| 123 | **Módulo Mi$Parfil** |  |  |  |  | was named Módulo Mi Perfil |
| 125 | Vmlocidad máxima alcanzada |  |  |  |  | was named Velocidad máxima alcanzada |
| 126 | Fenocidad promådio |  |  |  |  | was named Velocidad promedio |
| 127 | Altura"máxima alcaîzada |  |  |  |  | was named Altura máxima alcanzada |

## Version 3 (saved 2014-07-11)

Note of the change: Update: Actualización de fechas en el Gantt para la documentación de Testing

Last finish stays 2014-11-20. Complete tasks 27 → 55.

Removed: 111 Módulo Administración; 112 ABM de zonas de alertas

Changed:

| ID | Task | Start | Finish | Duration | Complete | Total float | Predecessors | Other |
| --- | --- | --- | --- | --- | --- | --- | --- | --- |
| 1 | **Sistema de información, alerta y prevención de accidentes en los centros de esquí (White Powder)** |  |  |  | 42% → 60% |  |  |  |
| 35 | **Documentación de Análisis** |  | 2014-06-26 A |  | 34% → 100% | 135.38d → none |  |  |
| 36 | **Documento de requerimientos de negocio** |  | 2014-06-19 A |  | 50% → 100% | 142.38d → none |  |  |
| 38 | Revisión del documento |  | 2014-06-12 A |  | 50% → 100% | 142.38d → none |  |  |
| 39 | Validación y correcciones | 2014-06-13 A | 2014-06-19 A |  | 0% → 100% | 142.38d → none |  |  |
| 40 | **Matriz de trazabilidad entre requerimientos y casos de uso** |  | 2014-06-26 A |  | 17% → 100% | 135.38d → none |  |  |
| 41 | Elaboración del documento |  | 2014-06-12 A |  | 50% → 100% | 135.38d → none |  |  |
| 42 | Revisión del documento | 2014-06-13 A | 2014-06-19 A |  | 0% → 100% | 135.38d → none |  |  |
| 43 | Validación y correcciones | 2014-06-20 A | 2014-06-26 A |  | 0% → 100% | 135.38d → none |  |  |
| 44 | **Documentos de casos de uso** |  | 2014-06-19 A |  | 45% → 100% | 142.38d → none |  |  |
| 45 | **Diagramas de casos de uso** |  | 2014-06-19 A |  | 45% → 100% | 142.38d → none |  |  |
| 47 | Revisión del documento |  | 2014-06-12 A |  | 50% → 100% | 142.38d → none |  |  |
| 48 | Validación y correcciones | 2014-06-13 A | 2014-06-19 A |  | 0% → 100% | 142.38d → none |  |  |
| 49 | **Especificación de casos de uso** |  | 2014-06-19 A |  | 45% → 100% | 142.38d → none |  |  |
| 51 | Revisión del documento |  | 2014-06-12 A |  | 50% → 100% | 142.38d → none |  |  |
| 52 | Validación y correcciones | 2014-06-13 A | 2014-06-19 A |  | 0% → 100% | 142.38d → none |  |  |
| 53 | **Diagramas de actividades** |  | 2014-06-26 A |  | 17% → 100% | 135.38d → none |  |  |
| 54 | Elaboración del documento |  | 2014-06-12 A |  | 50% → 100% | 135.38d → none |  |  |
| 55 | Revisión del documento | 2014-06-13 A | 2014-06-19 A |  | 0% → 100% | 135.38d → none |  |  |
| 56 | Validación y correcciones | 2014-06-20 A | 2014-06-26 A |  | 0% → 100% | 135.38d → none |  |  |
| 57 | **Documentación de Diseño** | 2014-06-13 A | 2014-07-03 → 2014-07-13 (+10d) | 20.88d → 30.25d | 0% → 93% | 6d → 25d |  |  |
| 58 | **Diagrama Entidad Relación** | 2014-06-13 A | 2014-06-26 A |  | 0% → 100% | 37d → none |  |  |
| 59 | Elaboración del documento | 2014-06-13 A | 2014-06-19 A |  | 0% → 100% | 140d → none |  |  |
| 60 | Revisión del documento | 2014-06-20 A | 2014-06-23 A |  | 0% → 100% | 146.38d → none |  |  |
| 61 | Validación y corrección | 2014-06-24 A | 2014-06-26 A |  | 0% → 100% | 146.38d → none |  |  |
| 62 | **Diagrama de secuencia** | 2014-06-16 A | 2014-07-03 A |  | 0% → 100% | 0d → none |  |  |
| 63 | Elaboración del documento | 2014-06-16 A | 2014-06-19 A |  | 0% → 100% | 2.38d → none |  |  |
| 64 | Revisión del documento | 2014-06-23 A | 2014-06-26 A |  | 0% → 100% | 0d → none |  |  |
| 65 | Validación y corrección | 2014-06-27 A | 2014-07-03 A |  | 0% → 100% | 0d → none |  |  |
| 66 | **Estructura de pantallas - Mockup (UI)** | 2014-06-20 A | 2014-07-03 → 2014-07-13 (+10d) | 13.88d → 23.25d | 0% → 79% | 36.38d → 25d |  |  |
| 67 | Elaboración del documento | 2014-06-20 A | 2014-06-26 A |  | 0% → 100% | 139.38d → none |  |  |
| 68 | Revisión del documento | 2014-06-27 A | 2014-06-30 A |  | 0% → 100% | 140d → none |  |  |
| 69 | Validación y corrección | 2014-07-01 → 2014-07-11 (+10d) | 2014-07-03 → 2014-07-13 (+10d) |  |  | 139.38d → 25d |  | constraint finish no earlier than 2014-07-03 → start no earlier than 2014-07-10 |
| 70 | **Diagrama de interacción (UX)** | 2014-06-20 A |  |  | 0% → 79% |  |  |  |
| 71 | Elaboración del documento | 2014-06-20 A | 2014-06-26 A |  | 0% → 100% | 0d → none |  |  |
| 72 | Revisión del documento | 2014-06-27 A | 2014-06-30 A |  | 0% → 100% | 0d → none |  |  |
| 74 | **Diagrama de despliegue** | 2014-06-13 A | 2014-06-26 A |  | 0% → 100% | 6.38d → none |  |  |
| 75 | Elaboración del documento | 2014-06-13 A | 2014-06-19 A |  | 0% → 100% | 6.38d → none |  |  |
| 76 | Revisión del documento | 2014-06-20 A | 2014-06-23 A |  | 0% → 100% | 6.38d → none |  |  |
| 77 | Validación y corrección | 2014-06-24 A | 2014-06-26 A |  | 0% → 100% | 6.38d → none |  |  |
| 78 | **Diagrama de clases** | 2014-06-20 A | 2014-07-03 A |  | 0% → 100% | 36.38d → none |  |  |
| 79 | Elaboración del documento | 2014-06-20 A | 2014-06-26 A |  | 0% → 100% | 140d → none |  |  |
| 80 | Revisión del documento | 2014-06-27 A | 2014-06-30 A |  | 0% → 100% | 36.38d → none |  |  |
| 81 | Validación y corrección | 2014-07-01 A | 2014-07-03 A |  | 0% → 100% | 139.38d → none |  |  |
| 82 | **Construcción del sistema** | 2014-07-04 → 2014-07-14 (+10d) |  | 111.88d → 101.88d |  |  |  |  |
| 83 | **Construcción del primer prototipo** | 2014-07-04 → 2014-07-14 (+10d) |  | 48.88d → 38.88d |  | 13.38d → 11.38d |  |  |
| 84 | **Módulo Registro de usuarios** | 2014-07-04 → 2014-07-14 (+10d) | 2014-07-11 → 2014-07-21 (+10d) |  |  | 37d → 25d |  |  |
| 85 | Registro de usuarios | 2014-07-04 → 2014-07-14 (+10d) | 2014-07-08 → 2014-07-18 (+10d) |  |  | 36.38d → 25d |  |  |
| 86 | Reseteo/cambio de contraseña | 2014-07-09 → 2014-07-19 (+10d) | 2014-07-11 → 2014-07-21 (+10d) |  |  | 37d → 25d |  |  |
| 87 | **Modulo Login** | 2014-07-12 → 2014-07-22 (+10d) | 2014-07-18 → 2014-07-28 (+10d) | 6.88d → 6.25d |  | 36.38d → 25d |  |  |
| 88 | Autenticación de usuarios | 2014-07-12 → 2014-07-22 (+10d) | 2014-07-15 → 2014-07-25 (+10d) |  |  | 36.38d → 25d |  |  |
| 89 | Validación de usuarios | 2014-07-16 → 2014-07-26 (+10d) | 2014-07-18 → 2014-07-28 (+10d) |  |  | 36.38d → 25d |  |  |
| 90 | **Modulo Información básica** | 2014-07-08 → 2014-07-14 (+6d) | 2014-07-18 → 2014-07-21 (+3d) | 10.25d → 7.25d |  | 33d → 28d |  |  |
| 91 | Ubicación y detalles de las facilidades del centro de esquí | 2014-07-08 → 2014-07-18 (+10d) | 2014-07-11 → 2014-07-21 (+10d) |  |  | 98d → 28d |  |  |
| 92 | Normas de seguridad | 2014-07-12 → 2014-07-14 (+2d) | 2014-07-15 → 2014-07-17 (+2d) |  |  | 35.38d → 32d |  |  |
| 93 | Señalización en las pistas | 2014-07-08 → 2014-07-15 (+7d) | 2014-07-11 → 2014-07-18 (+7d) |  |  | 98d → 31d |  |  |
| 95 | **Módulo Mi perfil** | 2014-07-19 → 2014-07-22 (+3d) | 2014-07-22 → 2014-07-25 (+3d) |  |  | 33d → 28d |  |  |
| 96 | Ubicación actual | 2014-07-19 → 2014-07-22 (+3d) | 2014-07-22 → 2014-07-25 (+3d) |  |  | 33d → 28d |  |  |
| 97 | **Modulo Administración** | 2014-07-04 → 2014-07-14 (+10d) |  | 30.25d → 20.25d |  | 14d → 12d |  |  |
| 100 | ABM de administradores | 2014-07-04 → 2014-07-14 (+10d) | 2014-07-06 → 2014-07-16 (+10d) |  |  | 41.38d → 30d |  |  |
| 101 | ABM de rescatistas | 2014-07-07 → 2014-07-14 (+7d) | 2014-07-11 → 2014-07-18 (+7d) |  |  | 37d → 28d |  |  |
| 111 | **Monitoreo de esquiadores en el centro de esquí** | 2014-08-24 → 2014-08-22 (-2d) |  | 6.88d → 8.88d |  |  |  |  |
| 112 | Cantidad de esquiadores | 2014-08-29 → 2014-08-22 (-7d) |  | 4h → 18h |  |  |  |  |
| 115 | Ejecución de casos de pruebas |  |  |  |  |  | Módulo Administración, 111 → 111 |  |
| 116 | **Informe de ejecución de pruebas** |  |  |  |  |  | Módulo Administración, 111 → 111 |  |
| 156 | **Documentación de testing** | 2014-06-27 → 2014-07-26 (+29d) | 2014-07-07 → 2014-08-05 (+29d) | 10.88d → 10.25d |  | 135.38d → 107d |  |  |
| 157 | **Documento de Casos de Prueba** | 2014-06-27 → 2014-07-26 (+29d) | 2014-07-07 → 2014-08-05 (+29d) | 10.88d → 10.25d |  | 135.38d → 107d |  |  |
| 158 | Elaboración del documento | 2014-06-27 → 2014-07-26 (+29d) | 2014-06-30 → 2014-07-29 (+29d) |  |  | 135.38d → 107d |  | constraint finish no earlier than 2014-06-30 → start no earlier than 2014-07-21 |
| 159 | Revisión del documento | 2014-07-01 → 2014-07-30 (+29d) | 2014-07-03 → 2014-08-01 (+29d) |  |  | 135.38d → 107d |  |  |
| 160 | Validación y correcciones | 2014-07-04 → 2014-08-02 (+29d) | 2014-07-07 → 2014-08-05 (+29d) |  |  | 135.38d → 107d |  |  |

## Version 4 (saved 2014-08-03)

Note of the change: Cambios base de datos API basic information

Last finish stays 2014-11-20. Complete tasks 55 → 59.

Changed:

| ID | Task | Start | Finish | Complete | Total float | Other |
| --- | --- | --- | --- | --- | --- | --- |
| 1 | **Sistema de información, alerta y prevención de accidentes en los centros de esquí (White Powder)** |  |  | 60% → 62% |  |  |
| 82 | **Construcción del sistema** | 2014-07-14 A |  | 0% → 6% |  |  |
| 83 | **Construcción del primer prototipo** | 2014-07-14 A |  | 0% → 13% |  |  |
| 84 | **Módulo Registro de usuarios** | 2014-07-14 → 2014-07-17 A (+3d) | 2014-07-21 → 2014-07-24 A (+3d) | 0% → 100% | 25d → none |  |
| 85 | Registro de usuarios | 2014-07-14 → 2014-07-17 A (+3d) | 2014-07-18 → 2014-07-21 A (+3d) | 0% → 100% | 25d → none |  |
| 86 | Reseteo/cambio de contraseña | 2014-07-19 → 2014-07-22 A (+3d) | 2014-07-21 → 2014-07-24 A (+3d) | 0% → 100% | 25d → none |  |
| 87 | **Modulo Login** | 2014-07-22 → 2014-07-25 A (+3d) | 2014-07-28 → 2014-07-31 A (+3d) | 0% → 100% | 25d → none |  |
| 88 | Autenticación de usuarios | 2014-07-22 → 2014-07-25 A (+3d) | 2014-07-25 → 2014-07-28 A (+3d) | 0% → 100% | 25d → none |  |
| 89 | Validación de usuarios | 2014-07-26 → 2014-07-29 A (+3d) | 2014-07-28 → 2014-07-31 A (+3d) | 0% → 100% | 25d → none |  |
| 121 | **Módulo Mi Parfil** |  |  |  |  | was named Módulo Mi$Parfil |

## Version 5 (saved 2014-10-18)

Last finish stays 2014-11-20. Complete tasks 59 → 82.

Changed:

| ID | Task | Start | Finish | Complete | Total float | Other |
| --- | --- | --- | --- | --- | --- | --- |
| 1 | **Sistema de información, alerta y prevención de accidentes en los centros de esquí (White Powder)** |  |  | 62% → 76% |  |  |
| 57 | **Documentación de Diseño** |  | 2014-07-13 A | 93% → 100% | 3d → none |  |
| 66 | **Estructura de pantallas - Mockup (UI)** |  | 2014-07-13 A | 79% → 100% | 3d → none |  |
| 69 | Validación y corrección | 2014-07-11 A | 2014-07-13 A | 0% → 100% | 25d → none |  |
| 70 | **Diagrama de interacción (UX)** |  | 2014-07-03 A | 79% → 100% | 0d → none |  |
| 73 | Validación y corrección | 2014-07-01 A | 2014-07-03 A | 0% → 100% | 0d → none |  |
| 82 | **Construcción del sistema** |  |  | 6% → 39% |  |  |
| 83 | **Construcción del primer prototipo** |  |  | 13% → 47% | 11.38d → 0.12d |  |
| 90 | **Modulo Información básica** | 2014-07-14 A | 2014-07-21 A | 0% → 100% | 28d → none |  |
| 91 | Ubicación y detalles de las facilidades del centro de esquí | 2014-07-18 A | 2014-07-21 A | 0% → 100% | 28d → none |  |
| 92 | Normas de seguridad | 2014-07-14 A | 2014-07-17 A | 0% → 100% | 32d → none |  |
| 93 | Señalización en las pistas | 2014-07-15 A | 2014-07-18 A | 0% → 100% | 31d → none |  |
| 94 | Información del clima | 2014-07-14 A | 2014-07-18 A | 0% → 100% | 31d → none |  |
| 95 | **Módulo Mi perfil** | 2014-07-22 A | 2014-07-25 A | 0% → 100% | 28d → none |  |
| 96 | Ubicación actual | 2014-07-22 A | 2014-07-25 A | 0% → 100% | 28d → none |  |
| 97 | **Modulo Administración** | 2014-07-14 A |  | 0% → 58% | 12d → 7d |  |
| 98 | Edición de información básica del centro de esquí | 2014-07-23 A | 2014-07-25 A | 0% → 100% | 20.38d → none |  |
| 99 | ABM de pistas | 2014-07-27 A | 2014-08-03 A | 0% → 100% | 12d → none |  |
| 102 | **Módulo Reconocimiento de pista** | 2014-08-04 A | 2014-08-10 A | 0% → 100% | 11.38d → none |  |
| 103 | Grabación de pista | 2014-08-04 A | 2014-08-06 A | 0% → 100% | 11.38d → none |  |
| 104 | Confirmación de pista | 2014-08-07 A | 2014-08-10 A | 0% → 100% | 11.38d → none |  |
| 110 | **Construcción del segundo prototipo** | 2014-08-22 A |  | 0% → 51% |  |  |
| 111 | **Monitoreo de esquiadores en el centro de esquí** | 2014-08-22 A |  | 0% → 85% | 11.38d → 0d |  |
| 112 | Cantidad de esquiadores | 2014-08-22 A | 2014-08-30 A | 0% → 100% | 11.38d → none |  |
| 113 | Ubicación de esquiadores | 2014-08-24 A | 2014-08-30 A | 0% → 100% | 11.38d → none |  |
| 114 | Ubicación de rescatistas | 2014-08-24 A |  | 0% → 50% | 12d → 0d |  |
| 120 | **Construcción del tercer prototipo** | 2014-09-12 A |  | 0% → 32% | 9.75d → 0.75d |  |
| 123 | Velocidad máxima alcanzada |  |  |  | 20.38d → 11.38d | was named Vmlocidad máxima alcanzada |
| 124 | Velocidad promedio |  |  |  | 20.38d → 11.38d | was named Fenocidad promådio |
| 125 | Altura máxima alcanzada |  |  |  | 20d → 11d | was named Altura"máxima alcaîzada |
| 128 | **Módulo Alertas** | 2014-09-12 A |  | 0% → 65% | 8.38d → 0d |  |
| 130 | **Envío de alertas monocanal** | 2014-09-12 A |  | 0% → 50% | 13.38d → 4.38d |  |
| 131 | A esquiadores | 2014-09-12 A | 2014-09-14 A | 0% → 100% | 14d → none |  |
| 133 | Recepción de alertas | 2014-09-14 A |  | 0% → 50% | 10d → 1d |  |
| 134 | **Envío de alertas multicanal** | 2014-09-15 A | 2014-09-19 A | 0% → 100% | 8.38d → none |  |
| 135 | A un grupo determinado | 2014-09-15 A | 2014-09-19 A | 0% → 100% | 8.38d → none |  |
| 136 | A todos | 2014-09-15 A | 2014-09-19 A | 0% → 100% | 8.38d → none |  |
| 142 | **Construcción del cuarto prototipo** | 2014-10-03 A |  | 0% → 9% |  |  |
| 145 | **Módulo Mi Perfil** | 2014-10-03 A |  | 0% → 50% |  |  |
| 146 | Conectar con periférico | 2014-10-03 A |  | 0% → 75% |  |  |
| 170 | **Entregables de Marketing** | 2014-07-25 A | 2014-09-04 A | 0% → 100% | 76.38d → none |  |
| 171 | **Poster del Proyecto** | 2014-07-25 A | 2014-08-07 A | 0% → 100% | 104.38d → none |  |
| 172 | Elaboración del entregable | 2014-07-25 A | 2014-07-31 A | 0% → 100% | 105d → none |  |
| 173 | Revisión del entregable | 2014-08-01 A | 2014-08-03 A | 0% → 100% | 104.38d → none |  |
| 174 | Validación y ajustes | 2014-08-04 A | 2014-08-07 A | 0% → 100% | 104.38d → none |  |
| 175 | **Presentación Comercial del Proyecto** | 2014-08-28 A | 2014-09-04 A | 0% → 100% | 76.38d → none |  |
| 176 | Gestión del Catering | 2014-08-28 A | 2014-08-28 A | 0% → 100% | 83.38d → none |  |
| 177 | Elaboración de la presentación | 2014-08-28 A | 2014-08-31 A | 0% → 100% | 77d → none |  |
| 178 | Revisión de la presentación | 2014-09-01 A | 2014-09-03 A | 0% → 100% | 77d → none |  |
| 179 | Delivery de la presentación | 2014-09-04 A | 2014-09-04 A | 0% → 100% | 76.38d → none |  |

## Version 6 (saved 2014-10-23)

Last finish stays 2014-11-20. Complete tasks 82 → 84.

Changed:

| ID | Task | Start | Finish | Complete | Total float |
| --- | --- | --- | --- | --- | --- |
| 1 | **Sistema de información, alerta y prevención de accidentes en los centros de esquí (White Powder)** |  |  | 76% → 77% |  |
| 82 | **Construcción del sistema** |  |  | 39% → 43% |  |
| 110 | **Construcción del segundo prototipo** |  |  | 51% → 61% | 11.38d → 0.12d |
| 111 | **Monitoreo de esquiadores en el centro de esquí** |  | 2014-08-30 A | 85% → 100% | 0d → none |
| 114 | Ubicación de rescatistas |  | 2014-08-30 A | 50% → 100% | 0d → none |
| 120 | **Construcción del tercer prototipo** |  |  | 32% → 41% | 0.75d → 9d |
| 128 | **Módulo Alertas** |  |  | 65% → 83% |  |
| 129 | ABM de alertas | 2014-09-12 A | 2014-09-14 A | 0% → 100% | 13.38d → none |
| 130 | **Envío de alertas monocanal** |  |  | 50% → 75% |  |
| 132 | A rescatistas | 2014-09-12 A |  | 0% → 50% | 13.38d → 4.38d |
