# UTN BA - Proyecto Final 2014 - G422 - Gantt del proyecto

How a schedule from MS Project changed from version to version. A marks actual dates.

## Version 1 (saved 2014-06-02)

Note of the change: Corrección de formato en UTN BA - Proyecto Final 2014 - G422 - Acta de Proyecto.doc

| ID | WBS | Task | Duration | Start | Finish | Predecessors | Complete | Total float | Constraint |
| --- | --- | --- | --- | --- | --- | --- | --- | --- | --- |
| 1 | 1 | **Sistema de información, alerta y prevención de accidentes en los centros de esquí (White Powder)** | 223d | 2014-04-12 A | 2014-11-20 |  | 39% | 0d |  |
| 2 | 1.1 | **Documentación de Gestión del Proyecto** | 55d | 2014-04-12 A | 2014-06-05 |  | 99% | 167.38d |  |
| 3 | 1.1.1 | **Acta de Proyecto** | 50d | 2014-04-12 A | 2014-05-31 A |  | 100% |  |  |
| 4 |  | Elaboración del documento | 82h | 2014-04-12 A | 2014-05-22 A |  | 100% |  | finish no earlier than 2014-05-22 |
| 5 |  | Revisión del documento | 14h | 2014-05-23 A | 2014-05-29 A | 4 | 100% |  | finish no earlier than 2014-05-29 |
| 6 |  | Validación y correcciones | 4h | 2014-05-30 A | 2014-05-31 A | 5 | 100% |  | finish no earlier than 2014-05-31 |
| 7 | 1.1.2 | **Documento de WBS** | 28d | 2014-04-25 A | 2014-05-22 A |  | 100% |  |  |
| 8 |  | Elaboración del documento | 29h | 2014-04-25 A | 2014-05-08 A |  | 100% |  | start no earlier than 2014-04-25 |
| 9 |  | Revisión del documento | 14h | 2014-05-09 A | 2014-05-15 A | 8 | 100% |  | finish no earlier than 2014-05-15 |
| 10 |  | Validación y correcciones | 14h | 2014-05-16 A | 2014-05-22 A | 9 | 100% |  | finish no earlier than 2014-05-22 |
| 11 | 1.1.3 | **Matriz de Roles y Responsabilidades** | 28d | 2014-04-25 A | 2014-05-22 A |  | 100% |  |  |
| 12 |  | Elaboración del documento | 28h | 2014-04-25 A | 2014-05-08 A |  | 100% |  | finish no earlier than 2014-05-08 |
| 13 |  | Revisión del documento | 14h | 2014-05-09 A | 2014-05-15 A | 12 | 100% |  | finish no earlier than 2014-05-15 |
| 14 |  | Validación y correcciones | 14h | 2014-05-16 A | 2014-05-22 A | 13 | 100% |  | finish no earlier than 2014-05-22 |
| 15 | 1.1.4 | **Matriz de habilidades y competencias** | 34.88d | 2014-04-25 A | 2014-05-29 A |  | 100% |  |  |
| 16 |  | Elaboración del documento | 28h | 2014-04-25 A | 2014-05-08 A |  | 100% |  | finish no earlier than 2014-05-08 |
| 17 |  | Revisión del documento | 14h | 2014-05-09 A | 2014-05-15 A | 16 | 100% |  | finish no earlier than 2014-05-15 |
| 18 |  | Validación y correcciones | 14h | 2014-05-23 A | 2014-05-29 A | 17 | 100% |  | finish no earlier than 2014-05-29 |
| 19 | 1.1.5 | **Análisis de Riesgos** | 27.25d | 2014-04-25 A | 2014-05-22 A |  | 100% |  |  |
| 20 |  | Elaboración del documento | 106h | 2014-04-25 A | 2014-05-08 A |  | 100% |  | finish no earlier than 2014-05-15 |
| 21 |  | Revisión del documento | 50h | 2014-05-09 A | 2014-05-15 A | 20 | 100% |  | finish no earlier than 2014-05-22 |
| 22 |  | Validación y correcciones | 50h | 2014-05-16 A | 2014-05-22 A | 21 | 100% |  | finish no earlier than 2014-05-29 |
| 23 | 1.1.6 | **Matriz de Comunicaciones** | 27.88d | 2014-04-25 A | 2014-05-22 A |  | 100% |  | finish no later than 2014-05-22 |
| 24 |  | Elaboración del documento | 28h | 2014-04-25 A | 2014-05-08 A |  | 100% |  | finish no earlier than 2014-05-08 |
| 25 |  | Revisión del documento | 14h | 2014-05-09 A | 2014-05-15 A | 24 | 100% |  | start no earlier than 2014-05-09 |
| 26 |  | Validación y correcciones | 14h | 2014-05-16 A | 2014-05-22 A | 25 | 100% |  | finish no earlier than 2014-05-22 |
| 27 | 1.1.7 | **GANTT del proyecto** | 21d | 2014-05-16 A | 2014-06-05 |  | 83% | 167.38d |  |
| 28 |  | Elaboración del documento | 14h | 2014-05-16 A | 2014-05-22 A | 8 | 100% |  | finish no earlier than 2014-05-22 |
| 29 |  | Revisión del documento | 14h | 2014-05-23 A | 2014-05-29 A | 28 | 100% |  | start no earlier than 2014-05-23 |
| 30 |  | Validación y correcciones | 14h | 2014-05-30 A | 2014-06-05 | 29, 7 | 50% | 167.38d | finish no earlier than 2014-06-05 |
| 31 | 1.1.8 | **Análisis de factibilidad técnica y operativa** | 18d | 2014-05-15 A | 2014-06-02 A |  | 100% |  |  |
| 32 |  | Elaboración del documento | 15h | 2014-05-15 A | 2014-05-22 A | 21 | 100% |  | finish no earlier than 2014-05-22 |
| 33 |  | Revisión del documento | 14h | 2014-05-23 A | 2014-05-29 A | 32 | 100% |  | finish no earlier than 2014-05-29 |
| 34 |  | Validación y correcciones | 7h | 2014-05-30 A | 2014-06-02 A | 33 | 100% |  | finish no earlier than 2014-06-01 |
| 35 | 1.2 | **Documentación de Análisis** | 27.88d | 2014-05-30 A | 2014-06-26 |  | 8% | 135.38d |  |
| 36 | 1.2.1 | **Documento de requerimientos de negocio** | 20.88d | 2014-05-30 A | 2014-06-19 |  | 17% | 142.38d |  |
| 37 |  | Elaboración del documento | 14h | 2014-05-30 A | 2014-06-05 |  | 50% | 135.38d | finish no earlier than 2014-06-05 |
| 38 |  | Revisión del documento | 14h | 2014-06-06 | 2014-06-12 | 37 |  | 142.38d | finish no earlier than 2014-06-12 |
| 39 |  | Validación y correcciones | 14h | 2014-06-13 | 2014-06-19 | 38 |  | 142.38d | finish no earlier than 2014-06-19 |
| 40 | 1.2.2 | **Matriz de trazabilidad entre requerimientos y casos de uso** | 20.88d | 2014-06-06 | 2014-06-26 | 37, 46 |  | 135.38d |  |
| 41 |  | Elaboración del documento | 14h | 2014-06-06 | 2014-06-12 |  |  | 135.38d | finish no earlier than 2014-06-12 |
| 42 |  | Revisión del documento | 14h | 2014-06-13 | 2014-06-19 | 41 |  | 135.38d | finish no earlier than 2014-06-19 |
| 43 |  | Validación y correcciones | 14h | 2014-06-20 | 2014-06-26 | 42 |  | 135.38d | finish no earlier than 2014-06-26 |
| 44 | 1.2.3 | **Documentos de casos de uso** | 19d | 2014-06-01 A | 2014-06-19 |  | 11% | 142.38d |  |
| 45 | 1.2.3.1 | **Diagramas de casos de uso** | 19d | 2014-06-01 A | 2014-06-19 |  | 9% | 142.38d |  |
| 46 |  | Elaboración del documento | 10h | 2014-06-01 A | 2014-06-05 |  | 35% | 135.38d | finish no earlier than 2014-06-05 |
| 47 |  | Revisión del documento | 14h | 2014-06-06 | 2014-06-12 | 46 |  | 142.38d | finish no earlier than 2014-06-12 |
| 48 |  | Validación y correcciones | 14h | 2014-06-13 | 2014-06-19 | 47 |  | 142.38d | finish no earlier than 2014-06-19 |
| 49 | 1.2.3.2 | **Especificación de casos de uso** | 19d | 2014-06-01 A | 2014-06-19 |  | 13% | 142.38d |  |
| 50 |  | Elaboración del documento | 10h | 2014-06-01 A | 2014-06-05 |  | 50% | 135.38d | finish no earlier than 2014-06-05 |
| 51 |  | Revisión del documento | 14h | 2014-06-06 | 2014-06-12 | 50 |  | 142.38d | finish no earlier than 2014-06-12 |
| 52 |  | Validación y correcciones | 14h | 2014-06-13 | 2014-06-19 | 51 |  | 142.38d | finish no earlier than 2014-06-19 |
| 53 | 1.2.4 | **Diagramas de actividades** | 20.88d | 2014-06-06 | 2014-06-26 |  |  | 135.38d |  |
| 54 |  | Elaboración del documento | 14h | 2014-06-06 | 2014-06-12 | 50 |  | 135.38d | finish no earlier than 2014-06-12 |
| 55 |  | Revisión del documento | 14h | 2014-06-13 | 2014-06-19 | 54 |  | 135.38d | finish no earlier than 2014-06-19 |
| 56 |  | Validación y correcciones | 14h | 2014-06-20 | 2014-06-26 | 55 |  | 135.38d | finish no earlier than 2014-06-26 |
| 57 | 1.3 | **Documentación de Diseño** | 20.88d | 2014-06-13 | 2014-07-03 |  |  | 6d |  |
| 58 | 1.3.1 | **Diagrama Entidad Relación** | 13.88d | 2014-06-13 | 2014-06-26 |  |  | 37d |  |
| 59 |  | Elaboración del documento | 14h | 2014-06-13 | 2014-06-19 |  |  | 140d | start no earlier than 2014-06-13 |
| 60 |  | Revisión del documento | 8h | 2014-06-20 | 2014-06-23 | 59 |  | 146.38d | finish no earlier than 2014-06-23 |
| 61 |  | Validación y corrección | 6h | 2014-06-24 | 2014-06-26 | 60 |  | 146.38d | finish no earlier than 2014-06-26 |
| 62 | 1.3.2 | **Diagrama de secuencia** | 17.25d | 2014-06-16 | 2014-07-03 |  |  | 0d | finish no later than 2014-07-03 |
| 63 |  | Elaboración del documento | 8h | 2014-06-16 | 2014-06-19 |  |  | 2.38d | finish no earlier than 2014-06-19 |
| 64 |  | Revisión del documento | 8h | 2014-06-23 | 2014-06-26 | 63 |  | 0d | finish no earlier than 2014-06-26 |
| 65 |  | Validación y corrección | 14h | 2014-06-27 | 2014-07-03 | 64 |  | 0d | start no earlier than 2014-06-27 |
| 66 | 1.3.3 | **Estructura de pantallas - Mockup (UI)** | 13.88d | 2014-06-20 | 2014-07-03 |  |  | 36.38d |  |
| 67 |  | Elaboración del documento | 14h | 2014-06-20 | 2014-06-26 |  |  | 139.38d | finish no earlier than 2014-06-26 |
| 68 |  | Revisión del documento | 8h | 2014-06-27 | 2014-06-30 | 67 |  | 140d | start no earlier than 2014-06-27 |
| 69 |  | Validación y corrección | 6h | 2014-07-01 | 2014-07-03 | 68 |  | 139.38d | finish no earlier than 2014-07-03 |
| 70 | 1.3.4 | **Diagrama de interacción (UX)** | 13.88d | 2014-06-20 | 2014-07-03 |  |  | 0d | finish no later than 2014-07-03 |

| ID | WBS | Task | Duration | Start | Finish | Predecessors | Total float | Constraint |
| --- | --- | --- | --- | --- | --- | --- | --- | --- |
| 71 |  | Elaboración del documento | 14h | 2014-06-20 | 2014-06-26 |  | 0d | finish no earlier than 2014-06-26 |
| 72 |  | Revisión del documento | 8h | 2014-06-27 | 2014-06-30 | 71 | 0d | finish no earlier than 2014-06-30 |
| 73 |  | Validación y corrección | 6h | 2014-07-01 | 2014-07-03 | 72 | 0d | finish no earlier than 2014-07-03 |
| 74 | 1.3.5 | **Diagrama de despliegue** | 13.88d | 2014-06-13 | 2014-06-26 |  | 6.38d | finish no later than 2014-07-03 |
| 75 |  | Elaboración del documento | 14h | 2014-06-13 | 2014-06-19 |  | 6.38d | finish no earlier than 2014-06-19 |
| 76 |  | Revisión del documento | 8h | 2014-06-20 | 2014-06-23 | 75 | 6.38d | finish no earlier than 2014-06-23 |
| 77 |  | Validación y corrección | 6h | 2014-06-24 | 2014-06-26 | 76 | 6.38d | finish no earlier than 2014-06-26 |
| 78 | 1.3.6 | **Diagrama de clases** | 13.88d | 2014-06-20 | 2014-07-03 |  | 36.38d |  |
| 79 |  | Elaboración del documento | 14h | 2014-06-20 | 2014-06-26 | 59 | 140d | start no earlier than 2014-06-20 |
| 80 |  | Revisión del documento | 8h | 2014-06-27 | 2014-06-30 | 79 | 36.38d | finish no earlier than 2014-06-30 |
| 81 |  | Validación y corrección | 6h | 2014-07-01 | 2014-07-03 | 80 | 139.38d | finish no earlier than 2014-07-03 |
| 82 | 1.4 | **Construcción del sistema** | 111.88d | 2014-07-04 | 2014-10-23 | 57 | 5.38d |  |
| 83 | 1.4.1 | **Construcción del primer prototipo** | 48.88d | 2014-07-04 | 2014-08-21 |  | 13.38d |  |
| 84 | 1.4.1.1 | **Módulo Registro de usuarios** | 7.25d | 2014-07-04 | 2014-07-11 |  | 37d |  |
| 85 |  | Registro de usuarios | 10h | 2014-07-04 | 2014-07-08 |  | 36.38d | finish no earlier than 2014-07-08 |
| 86 |  | Reseteo/cambio de contraseña | 6h | 2014-07-09 | 2014-07-11 | 85 | 37d |  |
| 87 | 1.4.1.2 | **Modulo Login** | 6.88d | 2014-07-12 | 2014-07-18 |  | 36.38d |  |
| 88 |  | Autenticación de usuarios | 8h | 2014-07-12 | 2014-07-15 | 84 | 36.38d | finish no earlier than 2014-07-15 |
| 89 |  | Validación de usuarios | 6h | 2014-07-16 | 2014-07-18 | 88 | 36.38d | finish no earlier than 2014-07-18 |
| 90 | 1.4.1.3 | **Modulo Información básica** | 10.25d | 2014-07-08 | 2014-07-18 |  | 33d |  |
| 91 |  | Ubicación y detalles de las facilidades del centro de esquí | 8h | 2014-07-08 | 2014-07-11 |  | 98d | start no earlier than 2014-07-04 |
| 92 |  | Normas de seguridad | 8h | 2014-07-12 | 2014-07-15 |  | 35.38d | finish no earlier than 2014-07-15 |
| 93 |  | Señalización en las pistas | 8h | 2014-07-08 | 2014-07-11 |  | 98d | finish no earlier than 2014-07-10 |
| 94 |  | Información del clima | 10h | 2014-07-14 | 2014-07-18 |  | 33d | start no earlier than 2014-07-14 |
| 95 | 1.4.1.4 | **Módulo Mi perfil** | 3.25d | 2014-07-19 | 2014-07-22 |  | 33d |  |
| 96 |  | Ubicación actual | 8h | 2014-07-19 | 2014-07-22 | 90 | 33d | finish no earlier than 2014-07-07 |
| 97 | 1.4.1.5 | **Modulo Administración** | 30.25d | 2014-07-04 | 2014-08-03 |  | 14d |  |
| 98 |  | Edición de información básica del centro de esquí | 6h | 2014-07-23 | 2014-07-25 |  | 22.38d | finish no earlier than 2014-07-25 |
| 99 |  | ABM de pistas | 16h | 2014-07-27 | 2014-08-03 |  | 14d | start no earlier than 2014-07-27 |
| 100 |  | ABM de administradores | 6h | 2014-07-04 | 2014-07-06 |  | 41.38d | finish no earlier than 2014-07-06 |
| 101 |  | ABM de rescatistas | 10h | 2014-07-07 | 2014-07-11 |  | 37d | start no earlier than 2014-07-07 |
| 102 | 1.4.1.6 | **Módulo Reconocimiento de pista** | 6.88d | 2014-08-04 | 2014-08-10 |  | 13.38d |  |
| 103 |  | Grabación de pista | 6h | 2014-08-04 | 2014-08-06 | 97 | 13.38d | finish no earlier than 2014-08-06 |
| 104 |  | Confirmación de pista | 8h | 2014-08-07 | 2014-08-10 | 103 | 13.38d | finish no earlier than 2014-08-10 |
| 105 |  | Ejecución de casos de pruebas | 87h | 2014-08-11 | 2014-08-21 | 84, 87, 90, 95, 97, 102 | 13.38d | finish no earlier than 2014-08-21 |
| 106 | 1.4.1.8 | **Informe de ejecución de pruebas** | 10.25d | 2014-08-11 | 2014-08-21 | 84, 87, 90, 95, 97, 102 | 14d |  |
| 107 |  | Elaboración del documento | 6h | 2014-08-11 | 2014-08-13 |  | 13.38d | finish no earlier than 2014-08-13 |
| 108 |  | Revisión de incidentes de testing | 8h | 2014-08-14 | 2014-08-17 | 107 | 14d | start no earlier than 2014-08-14 |
| 109 |  | Corrección de incidentes de testing | 8h | 2014-08-18 | 2014-08-21 | 108 | 14d | start no earlier than 2014-08-18 |
| 110 | 1.4.2 | **Construcción del segundo prototipo** | 20.88d | 2014-08-22 | 2014-09-11 | 83 | 11.38d |  |
| 111 | 1.4.2.1 | **Módulo Administración** | 5.25d | 2014-08-22 | 2014-08-27 |  | 15d |  |
| 112 |  | ABM de zonas de alertas | 12h | 2014-08-22 | 2014-08-27 |  | 15d | start no earlier than 2014-08-22 |
| 113 | 1.4.2.2 | **Monitoreo de esquiadores en el centro de esquí** | 6.88d | 2014-08-24 | 2014-08-30 |  | 11.38d |  |
| 114 |  | Cantidad de esquiadores | 4h | 2014-08-29 | 2014-08-30 |  | 11.38d | finish no earlier than 2014-08-30 |
| 115 |  | Ubicación de esquiadores | 14h | 2014-08-24 | 2014-08-30 |  | 11.38d | finish no earlier than 2014-08-30 |
| 116 |  | Ubicación de rescatistas | 14h | 2014-08-24 | 2014-08-30 |  | 12d | start no earlier than 2014-08-24 |
| 117 |  | Ejecución de casos de pruebas | 8h | 2014-08-31 | 2014-09-03 | 111, 113 | 19.38d | finish no earlier than 2014-09-03 |
| 118 | 1.4.2.4 | **Informe de ejecución de pruebas** | 11.88d | 2014-08-31 | 2014-09-11 | 111, 113 | 11.38d |  |
| 119 |  | Elaboración del documento | 8h | 2014-08-31 | 2014-09-03 |  | 12d | start no earlier than 2014-08-31 |
| 120 |  | Revisión de incidentes de testing | 8h | 2014-09-05 | 2014-09-08 | 119 | 63d | start no earlier than 2014-09-04 |
| 121 |  | Corrección de incidentes de testing | 6h | 2014-09-09 | 2014-09-11 | 120 | 11.38d | finish no earlier than 2014-09-11 |
| 122 | 1.4.3 | **Construcción del tercer prototipo** | 20.25d | 2014-09-12 | 2014-10-02 | 110 | 9.75d |  |
| 123 | 1.4.3.1 | **Módulo Mi Perfil** | 5.25d | 2014-09-16 | 2014-09-21 |  | 20d |  |
| 124 | 1.4.3.1.1 | **Estadísticas** | 1.25d | 2014-09-16 | 2014-09-17 |  | 20d |  |
| 125 |  | Velocidad máxima alcanzada | 2h | 2014-09-16 | 2014-09-16 |  | 20.38d | finish no earlier than 2014-09-16 |
| 126 |  | Velocidad promedio | 2h | 2014-09-16 | 2014-09-16 |  | 20.38d | finish no earlier than 2014-09-16 |
| 127 |  | Altura máxima alcanzada | 2h | 2014-09-17 | 2014-09-17 |  | 20d | start no earlier than 2014-09-17 |
| 128 |  | Distancia recorrida | 2h | 2014-09-17 | 2014-09-17 |  | 20d | start no earlier than 2014-09-17 |
| 129 |  | Puesta a cero de estadísticas | 8h | 2014-09-18 | 2014-09-21 | 124 | 20d | start no earlier than 2014-09-16 |
| 130 | 1.4.3.2 | **Módulo Alertas** | 7.88d | 2014-09-12 | 2014-09-19 |  | 8.38d |  |
| 131 |  | ABM de alertas | 6h | 2014-09-12 | 2014-09-14 |  | 13.38d | finish no earlier than 2014-09-14 |
| 132 | 1.4.3.2.2 | **Envío de alertas monocanal** | 2.88d | 2014-09-12 | 2014-09-14 |  | 13.38d |  |
| 133 |  | A esquiadores | 6h | 2014-09-12 | 2014-09-14 |  | 14d | finish no earlier than 2014-09-11 |
| 134 |  | A rescatistas | 6h | 2014-09-12 | 2014-09-14 |  | 13.38d | finish no earlier than 2014-09-14 |
| 135 |  | Recepción de alertas | 10h | 2014-09-14 | 2014-09-18 |  | 10d | finish no earlier than 2014-09-14 |
| 136 | 1.4.3.2.4 | **Envío de alertas multicanal** | 4.88d | 2014-09-15 | 2014-09-19 |  | 8.38d |  |
| 137 |  | A un grupo determinado | 10h | 2014-09-15 | 2014-09-19 |  | 8.38d | finish no earlier than 2014-09-19 |
| 138 |  | A todos | 10h | 2014-09-15 | 2014-09-19 |  | 8.38d | finish no earlier than 2014-09-19 |
| 139 |  | Ejecución de casos de pruebas | 8h | 2014-09-20 | 2014-09-23 | 130 | 17.38d | finish no earlier than 2014-09-23 |
| 140 | 1.4.3.4 | **Informe de ejecución de pruebas** | 12.25d | 2014-09-20 | 2014-10-02 | 130 | 9d |  |

| ID | WBS | Task | Duration | Start | Finish | Predecessors | Total float | Constraint |
| --- | --- | --- | --- | --- | --- | --- | --- | --- |
| 141 |  | Elaboración del documento | 8h | 2014-09-20 | 2014-09-23 |  | 8.38d | finish no earlier than 2014-09-23 |
| 142 |  | Revisión de incidentes de testing | 10h | 2014-09-24 | 2014-09-28 | 141 | 8.38d | finish no earlier than 2014-09-28 |
| 143 |  | Corrección de incidentes de testing | 8h | 2014-09-29 | 2014-10-02 | 142 | 9.12d | start no earlier than 2014-09-29 |
| 144 | 1.4.4 | **Construcción del cuarto prototipo** | 20.88d | 2014-10-03 | 2014-10-23 | 122 | 5.38d |  |
| 145 | 1.4.4.1 | **Módulo Alertas** | 3.88d | 2014-10-03 | 2014-10-06 |  | 8.38d |  |
| 146 |  | Incorporación de audio en las alertas | 8h | 2014-10-03 | 2014-10-06 |  | 8.38d | finish no earlier than 2014-10-06 |
| 147 | 1.4.4.2 | **Módulo Mi Perfil** | 6.25d | 2014-10-03 | 2014-10-09 |  | 6d |  |
| 148 |  | Conectar con periférico | 8h | 2014-10-03 | 2014-10-06 |  | 8.38d | finish no earlier than 2014-10-06 |
| 149 |  | Botón de emergencia | 4h | 2014-10-08 | 2014-10-09 |  | 6d | finish no earlier than 2014-10-03 |
| 150 | 1.4.4.3 | **Compartir en redes sociales** | 1.88d | 2014-10-08 | 2014-10-09 |  | 5.38d |  |
| 151 |  | Estadísticas | 2h | 2014-10-08 | 2014-10-08 |  | 6.38d | finish no earlier than 2014-10-08 |
| 152 |  | Ubicación actual | 2h | 2014-10-09 | 2014-10-09 |  | 5.38d | finish no earlier than 2014-10-09 |
| 153 |  | Ejecución de casos de pruebas | 12h | 2014-10-10 | 2014-10-15 | 145, 147, 150 | 13.38d | finish no earlier than 2014-10-15 |
| 154 | 1.4.4.5 | **Informe de ejecución de pruebas** | 13.88d | 2014-10-10 | 2014-10-23 |  | 5.38d |  |
| 155 |  | Elaboración del documento | 12h | 2014-10-10 | 2014-10-15 | 145, 147, 150 | 5.38d | finish no earlier than 2014-10-15 |
| 156 |  | Revisión de incidentes de testing | 8h | 2014-10-16 | 2014-10-19 | 155 | 6d | start no earlier than 2014-10-16 |
| 157 |  | Corrección de incidentes de testing | 8h | 2014-10-20 | 2014-10-23 | 156 | 5.38d | finish no earlier than 2014-10-23 |
| 158 | 1.5 | **Documentación de testing** | 10.88d | 2014-06-27 | 2014-07-07 |  | 135.38d |  |
| 159 | 1.5.1 | **Documento de Casos de Prueba** | 10.88d | 2014-06-27 | 2014-07-07 |  | 135.38d |  |
| 160 |  | Elaboración del documento | 8h | 2014-06-27 | 2014-06-30 | 35 | 135.38d | finish no earlier than 2014-06-30 |
| 161 |  | Revisión del documento | 6h | 2014-07-01 | 2014-07-03 | 160 | 135.38d | finish no earlier than 2014-07-03 |
| 162 |  | Validación y correcciones | 8h | 2014-07-04 | 2014-07-07 | 161 | 135.38d | finish no earlier than 2014-07-07 |
| 163 | 1.6 | **Entrega del producto final** | 10.88d | 2014-10-30 | 2014-11-09 | 82 | 0d |  |
| 164 | 1.6.1 | **Manual de usuario** | 10.88d | 2014-10-30 | 2014-11-09 |  | 0d |  |
| 165 |  | Elaboración del documento | 8h | 2014-10-30 | 2014-11-02 |  | 0d | finish no earlier than 2014-11-02 |
| 166 |  | Revisión del documento | 6h | 2014-11-03 | 2014-11-05 | 165 | 0d | finish no earlier than 2014-11-05 |
| 167 |  | Validación y correcciones | 8h | 2014-11-06 | 2014-11-09 | 166 | 0d | finish no earlier than 2014-11-09 |
| 168 | 1.6.2 | **Manual de instalación.** | 10.25d | 2014-10-30 | 2014-11-09 |  | 0d |  |
| 169 |  | Elaboración del documento | 8h | 2014-10-30 | 2014-11-02 |  | 0d | finish no earlier than 2014-11-02 |
| 170 |  | Revisión del documento | 6h | 2014-11-03 | 2014-11-05 | 169 | 0d | start no earlier than 2014-11-03 |
| 171 |  | Validación y correcciones | 8h | 2014-11-06 | 2014-11-09 | 170 | 0d | start no earlier than 2014-11-06 |
| 172 | 1.7 | **Entregables de Marketing** | 41.88d | 2014-07-25 | 2014-09-04 |  | 76.38d |  |
| 173 | 1.7.1 | **Poster del Proyecto** | 13.88d | 2014-07-25 | 2014-08-07 |  | 104.38d |  |
| 174 |  | Elaboración del entregable | 14h | 2014-07-25 | 2014-07-31 |  | 105d | start no earlier than 2014-07-25 |
| 175 |  | Revisión del entregable | 6h | 2014-08-01 | 2014-08-03 | 174 | 104.38d | finish no earlier than 2014-08-03 |
| 176 |  | Validación y ajustes | 8h | 2014-08-04 | 2014-08-07 | 175 | 104.38d | finish no earlier than 2014-08-07 |
| 177 | 1.7.2 | **Presentación Comercial del Proyecto** | 7.88d | 2014-08-28 | 2014-09-04 |  | 76.38d |  |
| 178 |  | Gestión del Catering | 1h | 2014-08-28 | 2014-08-28 |  | 83.38d | finish no earlier than 2014-08-28 |
| 179 |  | Elaboración de la presentación | 8h | 2014-08-28 | 2014-08-31 |  | 77d | start no earlier than 2014-08-28 |
| 180 |  | Revisión de la presentación | 6h | 2014-09-01 | 2014-09-03 | 179 | 77d | start no earlier than 2014-09-01 |
| 181 |  | Delivery de la presentación | 2h | 2014-09-04 | 2014-09-04 | 180 | 76.38d | finish no earlier than 2014-09-04 |
| 182 | 1.8 | **Cierre del proyecto** | 10.88d | 2014-11-10 | 2014-11-20 |  | 0d |  |
| 183 | 1.8.1 | **Documento de cierre del proyecto** | 10.88d | 2014-11-10 | 2014-11-20 |  | 0d |  |
| 184 |  | Elaboración del documento | 6h | 2014-11-10 | 2014-11-12 | 163 | 0d | start no earlier than 2014-11-10 |
| 185 |  | Revisión del documento | 8h | 2014-11-13 | 2014-11-16 | 184 | 0d | start no earlier than 2014-11-13 |
| 186 |  | Validación y correcciones | 8h | 2014-11-17 | 2014-11-20 | 185 | 0d | finish no earlier than 2014-11-20 |
| 187 | 1.8.2 | **Documento de lecciones aprendidas** | 10.88d | 2014-11-10 | 2014-11-20 |  | 0d |  |
| 188 |  | Elaboración del documento | 6h | 2014-11-10 | 2014-11-12 | 163 | 0d | finish no earlier than 2014-11-12 |
| 189 |  | Revisión del documento | 8h | 2014-11-13 | 2014-11-16 | 188 | 0d | finish no earlier than 2014-11-16 |
| 190 |  | Validación y correcciones | 8h | 2014-11-17 | 2014-11-20 | 189 | 0d | finish no earlier than 2014-11-20 |

## Version 2 (saved 2014-06-07)

Note of the change: CHAU ZONA DE ALERTAS

Last finish stays 2014-11-20. Complete tasks 23 → 27.

Removed: 111 Módulo Administración; 112 ABM de zonas de alertas

Changed:

| ID | Task | Start | Finish | Duration | Complete | Total float | Predecessors | Other |
| --- | --- | --- | --- | --- | --- | --- | --- | --- |
| 1 | **Sistema de información, alerta y prevención de accidentes en los centros de esquí (White Powder)** |  |  |  | 39% → 42% |  |  |  |
| 2 | **Documentación de Gestión del Proyecto** |  | 2014-06-05 A |  | 99% → 100% | 167.38d → none |  |  |
| 27 | **GANTT del proyecto** |  | 2014-06-05 A |  | 83% → 100% | 167.38d → none |  |  |
| 30 | Validación y correcciones |  | 2014-06-05 A |  | 50% → 100% | 167.38d → none |  |  |
| 35 | **Documentación de Análisis** |  |  |  | 8% → 34% |  |  |  |
| 36 | **Documento de requerimientos de negocio** |  |  |  | 17% → 50% |  |  |  |
| 37 | Elaboración del documento |  | 2014-06-05 A |  | 50% → 100% | 135.38d → none |  |  |
| 38 | Revisión del documento | 2014-06-06 A |  |  | 0% → 50% |  |  |  |
| 40 | **Matriz de trazabilidad entre requerimientos y casos de uso** | 2014-06-06 A |  |  | 0% → 17% |  |  |  |
| 41 | Elaboración del documento | 2014-06-06 A |  |  | 0% → 50% |  |  |  |
| 44 | **Documentos de casos de uso** |  |  |  | 11% → 45% |  |  |  |
| 45 | **Diagramas de casos de uso** |  |  |  | 9% → 45% |  |  |  |
| 46 | Elaboración del documento |  | 2014-06-05 A |  | 35% → 100% | 135.38d → none |  |  |
| 47 | Revisión del documento | 2014-06-06 A |  |  | 0% → 50% |  |  |  |
| 49 | **Especificación de casos de uso** |  |  |  | 13% → 45% |  |  |  |
| 50 | Elaboración del documento |  | 2014-06-05 A |  | 50% → 100% | 135.38d → none |  |  |
| 51 | Revisión del documento | 2014-06-06 A |  |  | 0% → 50% |  |  |  |
| 53 | **Diagramas de actividades** | 2014-06-06 A |  |  | 0% → 17% |  |  |  |
| 54 | Elaboración del documento | 2014-06-06 A |  |  | 0% → 50% |  |  |  |
| 111 | **Monitoreo de esquiadores en el centro de esquí** | 2014-08-24 → 2014-08-22 (-2d) |  | 6.88d → 8.88d |  |  |  |  |
| 112 | Cantidad de esquiadores | 2014-08-29 → 2014-08-22 (-7d) |  | 4h → 18h |  |  |  |  |
| 115 | Ejecución de casos de pruebas |  |  |  |  |  | Módulo Administración, 111 → 111 |  |
| 116 | **Informe de ejecución de pruebas** |  |  |  |  |  | Módulo Administración, 111 → 111 |  |
| 121 | **Módulo Mi$Parfil** |  |  |  |  |  |  | was named Módulo Mi Perfil |
| 123 | Vmlocidad máxima alcanzada |  |  |  |  |  |  | was named Velocidad máxima alcanzada |
| 124 | Fenocidad promådio |  |  |  |  |  |  | was named Velocidad promedio |
| 125 | Altura"máxima alcaîzada |  |  |  |  |  |  | was named Altura máxima alcanzada |

## Version 3 (saved 2014-06-15)

Note of the change: Actualización: UTN BA - Proyecto Final 2014 - G422 - Gantt del proyecto.mpp, tareas completadas hasta el 19/06/2014

Last finish stays 2014-11-20. Complete tasks 27 → 40.

Changed:

| ID | Task | Start | Finish | Complete | Total float |
| --- | --- | --- | --- | --- | --- |
| 1 | **Sistema de información, alerta y prevención de accidentes en los centros de esquí (White Powder)** |  |  | 42% → 51% |  |
| 35 | **Documentación de Análisis** |  |  | 34% → 86% |  |
| 36 | **Documento de requerimientos de negocio** |  | 2014-06-19 A | 50% → 100% | 142.38d → none |
| 38 | Revisión del documento |  | 2014-06-12 A | 50% → 100% | 142.38d → none |
| 39 | Validación y correcciones | 2014-06-13 A | 2014-06-19 A | 0% → 100% | 142.38d → none |
| 40 | **Matriz de trazabilidad entre requerimientos y casos de uso** |  |  | 17% → 67% |  |
| 41 | Elaboración del documento |  | 2014-06-12 A | 50% → 100% | 135.38d → none |
| 42 | Revisión del documento | 2014-06-13 A | 2014-06-19 A | 0% → 100% | 135.38d → none |
| 44 | **Documentos de casos de uso** |  | 2014-06-19 A | 45% → 100% | 142.38d → none |
| 45 | **Diagramas de casos de uso** |  | 2014-06-19 A | 45% → 100% | 142.38d → none |
| 47 | Revisión del documento |  | 2014-06-12 A | 50% → 100% | 142.38d → none |
| 48 | Validación y correcciones | 2014-06-13 A | 2014-06-19 A | 0% → 100% | 142.38d → none |
| 49 | **Especificación de casos de uso** |  | 2014-06-19 A | 45% → 100% | 142.38d → none |
| 51 | Revisión del documento |  | 2014-06-12 A | 50% → 100% | 142.38d → none |
| 52 | Validación y correcciones | 2014-06-13 A | 2014-06-19 A | 0% → 100% | 142.38d → none |
| 53 | **Diagramas de actividades** |  |  | 17% → 67% |  |
| 54 | Elaboración del documento |  | 2014-06-12 A | 50% → 100% | 135.38d → none |
| 55 | Revisión del documento | 2014-06-13 A | 2014-06-19 A | 0% → 100% | 135.38d → none |
| 57 | **Documentación de Diseño** | 2014-06-13 A |  | 0% → 21% | 6d → 139.38d |
| 58 | **Diagrama Entidad Relación** | 2014-06-13 A |  | 0% → 50% | 35d → 146.38d |
| 59 | Elaboración del documento | 2014-06-13 A | 2014-06-19 A | 0% → 100% | 140d → none |
| 62 | **Diagrama de secuencia** | 2014-06-16 A |  | 0% → 27% |  |
| 63 | Elaboración del documento | 2014-06-16 A | 2014-06-19 A | 0% → 100% | 2.38d → none |
| 74 | **Diagrama de despliegue** | 2014-06-13 A |  | 0% → 50% |  |
| 75 | Elaboración del documento | 2014-06-13 A | 2014-06-19 A | 0% → 100% | 6.38d → none |
